# 长寿区督查“一张网”信息管理系统

Schedule from MS Project, 2018-09-11 to 2018-12-20, status date 2018-09-11, 7.5 hours a day.
閲嶅簡鍗楀崕涓�澶╀俊鎭�鎶�鏈�鏈夐檺鍏�鍙�

## Calendars

- 标准: Mon-Fri 09:00-12:00, 13:00-17:30; Sat-Sun off.

## Resources

| Resource |
| --- |
| 李飞翔 |
| 朱举军 |
| 贺扬帆 |
| 刘富伟 |
| 贺真 |

## Schedule

| ID | WBS | Task | Type | Duration | Start | Finish | Baseline 1 finish | Deadline | Resources | Work |
| --- | --- | --- | --- | --- | --- | --- | --- | --- | --- | --- |
| 1 | 1 | **长寿区督查“一张网”信息管理系统** |  | 73d | 2018-09-11 | 2018-12-20 | 2018-12-20 | 2018-12-25 | 朱举军; 贺扬帆; 李飞翔; 刘富伟; 贺真 | 7170h |
| 2 | 1.1 | 需求调研 | manual | 15d | 2018-09-11 | 2018-09-30 | 2018-09-30 | 2018-09-30 | 李飞翔 | 112.5h |
| 3 | 1.2 | 规划设计 | manual | 15d | 2018-09-11 | 2018-09-30 | 2018-09-30 | 2018-09-30 | 贺扬帆; 李飞翔 | 225h |
| 4 | 1.3 | **项目实施执行** |  | 48d | 2018-09-11 | 2018-11-15 | 2018-11-15 | 2018-11-15 | 贺扬帆; 李飞翔; 刘富伟; 朱举军 | 2767.5h |
| 5 | 1.3.1 | 软件组件开发 | manual | 7d | 2018-09-11 | 2018-09-19 | 2018-09-19 |  | 刘富伟; 朱举军 | 105h |
| 6 | 1.3.2 | 督查APP前端页面 | manual | 15d | 2018-09-11 | 2018-09-30 | 2018-09-30 |  | 贺扬帆 | 112.5h |
| 7 | 1.3.3 | 督查任务 | manual | 25d | 2018-09-20 | 2018-10-24 | 2018-10-24 |  | 刘富伟 | 187.5h |
| 8 | 1.3.4 | 招商引资 | manual | 19d | 2018-09-20 | 2018-10-16 | 2018-10-16 |  | 朱举军 | 142.5h |
| 9 | 1.3.5 | 重大项目 | manual | 9d | 2018-10-10 | 2018-10-20 | 2018-10-20 |  | 李飞翔; 朱举军 | 135h |
| 10 | 1.3.6 | 督查门户 | manual | 6d | 2018-10-15 | 2018-10-20 |  |  | 贺扬帆 | 45h |
| 11 | 1.3.7 | 督查app数据接口 | manual | 10d | 2018-10-20 | 2018-11-01 | 2018-10-31 |  | 贺扬帆 | 75h |
| 12 | 1.3.8 | 导入导出 | manual | 6d | 2018-10-24 | 2018-10-31 | 2018-10-31 |  | 刘富伟; 朱举军; 贺扬帆 | 135h |
| 13 | 1.3.9 | 统计分析 | manual | 4d | 2018-11-01 | 2018-11-06 | 2018-11-06 |  | 刘富伟; 朱举军 | 60h |
| 14 | 1.3.10 | 动态信息、操作记录、归档办结、短信系统、催办、点评 | manual | 6d | 2018-11-07 | 2018-11-14 | 2018-11-14 |  | 贺扬帆; 李飞翔; 刘富伟; 朱举军 | 180h |
| 15 | 1.3.11 | 项目测试 | manual | 5d | 2018-11-10 | 2018-11-15 | 2018-11-15 |  | 贺扬帆; 李飞翔; 刘富伟; 朱举军 | 150h |
| 16 | 1.4 | 项目监控 | manual | 73d | 2018-09-11 | 2018-12-20 | 2018-12-20 | 2018-12-20 | 李飞翔 | 547.5h |
| 17 | 1.5 | 项目收尾 | manual | 26d | 2018-11-15 | 2018-12-20 | 2018-12-20 | 2018-12-20 | 贺扬帆; 李飞翔; 刘富伟; 朱举军 | 780h |
